# Sistema de Control de Mantenimiento de Equipo de Cómputo

Schedule from GanttProject, 2012-06-27 to 2013-10-14.
Facultad de Matemáticas

## Calendars

- Project calendar: Mon-Fri working; Sat-Sun off. Exceptions (off unless hours are given): 2012-07-16 to 2012-08-03, 2012-09-15 to 2012-09-16, 2012-10-12, 2012-11-01 to 2012-11-02, 2012-11-19, 2012-12-19 to 2013-01-06, 2013-02-04, 2013-02-11 to 2013-02-12, 2013-02-25, 2013-03-03, 2013-03-18, 2013-03-25 to 2013-04-07, 2013-04-25, 2013-05-01, 2013-05-10, 2013-05-15, 2013-07-17 to 2013-08-06, 2013-09-15 to 2013-09-16.

## Schedule

| ID | WBS | Task | Duration | Start | Finish | Predecessors | Constraint |
| --- | --- | --- | --- | --- | --- | --- | --- |
| 1 | 1 | Analizar Requerimientos | 18d | 2012-06-27 | 2012-08-10 |  |  |
| 2 | 2 | Inducción al equipo de desarrollo | 10d | 2012-08-13 | 2012-08-24 |  |  |
| 3 | 3 | **Diseñar** | 25d | 2012-08-27 | 2012-09-28 | 1, 2 |  |
| 4 | 3.1 | Diseño de Base de Datos | 25d | 2012-08-27 | 2012-09-28 |  |  |
| 5 | 3.2 | Diseño de Interfaz | 25d | 2012-08-27 | 2012-09-28 |  |  |
| 6 | 4 | **Desarrollar** | 131d | 2012-10-01 | 2013-05-21 | 3 |  |
| 7 | 4.1 | **Módulo Acceso** | 10d | 2012-10-01 | 2012-10-15 |  |  |
| 8 | 4.1.1 | Autenticación con BD | 8d | 2012-10-01 | 2012-10-10 |  |  |
| 9 | 4.1.2 | Autenticación con LDAP | 2d | 2012-10-11 | 2012-10-15 | 8 | start no earlier than 2012-08-31 |
| 10 | 4.2 | **Módulo de Seguridad** | 13d | 2012-10-11 | 2012-10-30 | 8 | start no earlier than 2012-08-10 |
| 11 | 4.2.1 | Alta/Baja/Cambios de Usuarios | 4d | 2012-10-11 | 2012-10-17 | 8 | start no earlier than 2012-08-10 |
| 12 | 4.2.2 | Asignación de Roles a Usuarios | 9d | 2012-10-18 | 2012-10-30 | 11 |  |
| 13 | 4.3 | **Módulo de Catálogos** | 42d | 2012-10-31 | 2013-01-18 | 8 |  |
| 14 | 4.3.1 | Proveedores | 5d | 2012-10-31 | 2012-11-08 | 1, 10 |  |
| 15 | 4.3.2 | Dependencias | 5d | 2012-11-09 | 2012-11-15 | 14 |  |
| 16 | 4.3.3 | Clientes | 5d | 2012-11-16 | 2012-11-23 | 15 | start no earlier than 2012-07-23 |
| 17 | 4.3.4 | Servicios | 5d | 2012-11-26 | 2012-11-30 | 1, 10, 16 | start no earlier than 2012-07-25 |
| 18 | 4.3.5 | Equipos | 5d | 2012-12-03 | 2012-12-07 | 17 |  |
| 19 | 4.3.6 | Modelos | 5d | 2012-12-10 | 2012-12-14 | 18 |  |
| 20 | 4.3.7 | Marcas | 5d | 2012-12-17 | 2013-01-09 | 19 |  |
| 21 | 4.3.8 | Refacciones | 5d | 2013-01-10 | 2013-01-16 | 1, 10, 20 |  |
| 22 | 4.3.9 | Trabajos | 5d | 2013-01-17 | 2013-01-23 | 21 |  |
| 23 | 4.4 | **Módulo de Entrada de Equipo** | 20d | 2013-01-21 | 2013-02-20 | 10, 13 | start no earlier than 2012-07-29 |
| 24 | 4.4.1 | Alta/Baja/Cambios de entradas | 15d | 2013-01-21 | 2013-02-13 | 10, 13 | start no earlier than 2012-07-29 |
| 25 | 4.4.2 | Impresión de entradas | 5d | 2013-02-14 | 2013-02-20 | 24 |  |

| ID | WBS | Task | Duration | Start | Finish | Predecessors |
| --- | --- | --- | --- | --- | --- | --- |
| 26 | 4.5 | **Módulo de Salida de Equipo** | 16d | 2013-02-21 | 2013-03-15 | 10, 13, 23 |
| 27 | 4.5.1 | Alta/Baja/Cambios de salidas | 12d | 2013-02-21 | 2013-03-11 | 1, 10, 13, 23 |
| 28 | 4.5.2 | Impresión de Salidas | 4d | 2013-03-12 | 2013-03-15 | 1, 10, 13, 23, 27 |
| 29 | 4.6 | **Módulo de Seguimiento** | 14d | 2013-03-19 | 2013-04-19 |  |
| 30 | 4.6.1 | Asignación de estado del equipo | 4d | 2013-03-19 | 2013-03-22 | 1, 10, 13, 23, 26 |
| 31 | 4.6.2 | Asignación de personal | 5d | 2013-04-08 | 2013-04-12 | 30 |
| 32 | 4.6.3 | Trabajos realizados al equipo | 5d | 2013-04-15 | 2013-04-19 | 31 |
| 33 | 4.7 | **Módulo de Estadísticas** | 18d | 2013-04-22 | 2013-05-21 |  |
| 34 | 4.7.1 | Número de PC, Laptop, impresora, etc, en un período de tiempo | 5d | 2013-04-22 | 2013-04-29 | 1, 3, 8, 10, 13, 23, 26, 29 |
| 35 | 4.7.2 | Número de PC, Laptop, impresora, etc son baja | 3d | 2013-04-22 | 2013-04-24 | 32 |
| 36 | 4.7.3 | Número de PC, Laptop, impresora, etc en garantía | 3d | 2013-04-22 | 2013-04-24 | 32 |
| 37 | 4.7.4 | Mantenimientos preventivos y correctivos diagnosticados. | 5d | 2013-04-26 | 2013-05-03 | 36 |
| 38 | 4.7.5 | Tiempo promedio de diagnóstico (El tiempo de diagnóstico es desde que el equipo es recepcionado hasta que se finaliza el diagnóstico) | 5d | 2013-05-06 | 2013-05-13 | 37 |
| 39 | 4.7.6 | Tiempo promedio de reparación (con pieza, sin pieza) | 5d | 2013-05-14 | 2013-05-21 | 38 |
| 40 | 5 | Validar y pruebar | 45d | 2013-05-22 | 2013-08-13 | 6 |
| 41 | 6 | Documentar | 20d | 2013-08-14 | 2013-09-10 | 40 |
| 42 | 7 | Implementar | 15d | 2013-09-11 | 2013-10-02 | 41 |
| 43 | 8 | Capacitar | 5d | 2013-10-03 | 2013-10-09 | 42 |
| 44 | 9 | Liberar | 3d | 2013-10-10 | 2013-10-14 | 43 |
